Schedule from MS Project, 2025-09-29 to 2025-12-05, status date 2025-10-28, 6 hours a day, costs in €, A marks actual dates.

## Calendars

- Calendario-Sevilla: Mon-Sat 08:00-14:00; Sun off. Exceptions (off unless hours are given): 2025-11-01 (Festividad Todos los Santos), 2025-11-23 08:00-12:00, 13:00-17:00.

## Resources

| Resource | Rate |
| --- | --- |
| Director de proyecto | 41.17 |
| Jefe de Equipo | 39.16 |
| Desarrollador Full-Stack | 31.06 |
| Gestor de documentación/Analista | 37.72 |
| Tester de calidad | 23.77 |
| Ordenadores portátiles |  |
| Software de desarrollo |  |
| Servidor PaaS |  |
| Reserva de contingencia |  |

## Schedule

| ID | WBS | Task | Duration | Start | Finish | Predecessors | Complete | Remaining | Baseline 1 start | Baseline 1 finish | Total slack | Free slack | Constraint | Resources | Work | Actual work | Cost | Actual cost | EDT |
| --- | --- | --- | --- | --- | --- | --- | --- | --- | --- | --- | --- | --- | --- | --- | --- | --- | --- | --- | --- |
| 1 | 1 | **Proyecto** | 59d | 2025-09-29 A | 2025-12-05 |  | 42% | 34.26d | 2025-09-29 | 2025-12-05 |  |  |  |  | 372h | 156h | 12,770.4 | 5,884.32 |  |
| 2 | 1.1 | **Inicio** | 6d | 2025-09-29 A | 2025-10-04 A |  | 100% |  | 2025-09-29 | 2025-10-04 |  |  |  |  | 36h | 36h | 1,357.92 | 1,357.92 |  |
| 3 | 1.1.1 | Conocimientos previos | 6d | 2025-09-29 A | 2025-10-04 A |  | 100% |  | 2025-09-29 | 2025-10-04 |  |  | finish no earlier than 2025-10-04 | Gestor de documentación/Analista | 36h | 36h | 1,357.92 | 1,357.92 | 1.1 |
| 4 | 1.2 | **Planificación** | 23d | 2025-10-06 A | 2025-10-31 |  | 87% | 3d | 2025-10-06 | 2025-10-31 |  |  |  |  | 138h | 120h | 5,205.36 | 4,526.4 |  |
| 5 | 1.2.1 | Documentos de gestión | 11d | 2025-10-06 A | 2025-10-17 A |  | 100% |  | 2025-10-06 | 2025-10-17 |  |  | start no earlier than 2025-10-06 | Gestor de documentación/Analista | 66h | 66h | 2,489.52 | 2,489.52 | 2.1 |
| 6 | 1.2.2 | Documentos de ejecución | 12d | 2025-10-18 A | 2025-10-31 | 5 | 75% | 3d | 2025-10-18 | 2025-10-31 | 30d |  | finish no earlier than 2025-10-31 | Gestor de documentación/Analista | 72h | 54h | 2,715.84 | 2,036.88 | 2.2 |
| 7 | 1.3 | **Desarrollo** | 18d | 2025-11-03 | 2025-11-22 |  |  |  | 2025-11-03 | 2025-11-22 |  |  | start no earlier than 2025-11-03 |  | 150h |  | 4,396.56 |  |  |
| 8 | 1.3.1 | **Iteración 1** | 6d | 2025-11-03 | 2025-11-08 |  |  |  | 2025-11-03 | 2025-11-08 |  |  | start no earlier than 2025-11-03 |  | 48h |  | 1,403.4 |  | 3.1 |
| 9 | 1.3.1.1 | Mockups | 1d | 2025-11-03 | 2025-11-03 |  |  |  | 2025-11-03 | 2025-11-03 | 17d | 0d | start no earlier than 2025-11-03 | Desarrollador Full-Stack | 6h |  | 186.36 |  | 3.1.1 |
| 10 | 1.3.1.2 | Creación Base de Datos | 2d | 2025-11-03 | 2025-11-04 |  |  |  | 2025-11-03 | 2025-11-04 | 13d | 0d |  | Desarrollador Full-Stack | 12h |  | 372.72 |  | 3.1.2 |
| 11 | 1.3.1.3 | Información corporativa y legales de Essenza | 1d | 2025-11-04 | 2025-11-04 | 9 |  |  | 2025-11-04 | 2025-11-04 | 17d |  |  | Desarrollador Full-Stack | 6h |  | 186.36 |  | 3.1.3 |
| 12 | 1.3.1.4 | Gestión del usuario | 2d | 2025-11-05 | 2025-11-06 | 10 |  |  | 2025-11-05 | 2025-11-06 | 13d | 0d |  | Desarrollador Full-Stack | 12h |  | 372.72 |  | 3.1.4 |
| 13 | 1.3.1.5 | Ejecución pruebas 1 | 2d | 2025-11-07 | 2025-11-08 | 12 |  |  | 2025-11-07 | 2025-11-08 | 13d |  |  | Tester de calidad | 12h |  | 285.24 |  | 3.1.5 |
| 14 | 1.3.2 | **Iteración 2** | 6d | 2025-11-10 | 2025-11-15 | 8 |  |  | 2025-11-10 | 2025-11-15 |  |  | start no earlier than 2025-11-10 |  | 54h |  | 1,589.76 |  | 3.2 |
| 15 | 1.3.2.1 | **Cliente** | 3d | 2025-11-10 | 2025-11-12 |  |  |  | 2025-11-10 | 2025-11-12 | 13d | 0d |  |  | 18h |  | 559.08 |  | 3.2.1 |
| 16 | 1.3.2.1.1 | Catálogo de productos | 1d | 2025-11-10 | 2025-11-10 |  |  |  | 2025-11-10 | 2025-11-10 | 13d | 0d |  | Desarrollador Full-Stack | 6h |  | 186.36 |  | 3.2.1.1 |
| 17 | 1.3.2.1.2 | Escaparate y navegación | 2d | 2025-11-11 | 2025-11-12 | 16 |  |  | 2025-11-11 | 2025-11-12 | 13d |  |  | Desarrollador Full-Stack | 12h |  | 372.72 |  | 3.2.1.2 |
| 18 | 1.3.2.2 | **Administrador** | 2d | 2025-11-10 | 2025-11-11 |  |  |  | 2025-11-10 | 2025-11-11 | 14d | 1d |  |  | 24h |  | 745.44 |  | 3.2.2 |
| 19 | 1.3.2.2.1 | CRUD productos | 2d | 2025-11-10 | 2025-11-11 |  |  |  | 2025-11-10 | 2025-11-11 | 14d |  |  | Desarrollador Full-Stack | 12h |  | 372.72 |  | 3.2.2.1 |
| 20 | 1.3.2.2.2 | Stock de productos | 2d | 2025-11-10 | 2025-11-11 |  |  |  | 2025-11-10 | 2025-11-11 | 14d |  |  | Desarrollador Full-Stack | 12h |  | 372.72 |  | 3.2.2.2 |
| 21 | 1.3.2.3 | Ejecutar pruebas 2 | 2d | 2025-11-13 | 2025-11-14 | 15, 18 |  |  | 2025-11-13 | 2025-11-14 | 13d |  |  | Tester de calidad | 12h |  | 285.24 |  | 3.2.3 |
| 22 | 1.3.3 | **Iteración 3** | 6d | 2025-11-17 | 2025-11-22 | 14 |  |  | 2025-11-17 | 2025-11-22 |  |  | start no earlier than 2025-11-17 |  | 48h |  | 1,403.4 |  | 3.3 |
| 23 | 1.3.3.1 | **Cliente** | 4d | 2025-11-17 | 2025-11-20 |  |  |  | 2025-11-17 | 2025-11-20 | 12d | 0d |  |  | 30h |  | 931.8 |  | 3.3.1 |
| 24 | 1.3.3.1.1 | CRUD carrito compra | 2d | 2025-11-17 | 2025-11-18 |  |  |  | 2025-11-17 | 2025-11-18 | 12d | 0d |  | Desarrollador Full-Stack | 12h |  | 372.72 |  | 3.3.1.1 |
| 25 | 1.3.3.1.2 | Información del pedido | 1d | 2025-11-17 | 2025-11-17 |  |  |  | 2025-11-17 | 2025-11-17 | 15d |  |  | Desarrollador Full-Stack | 6h |  | 186.36 |  | 3.3.1.2 |
| 26 | 1.3.3.1.3 | Checkout | 2d | 2025-11-19 | 2025-11-20 | 24 |  |  | 2025-11-19 | 2025-11-20 | 12d |  |  | Desarrollador Full-Stack | 12h |  | 372.72 |  | 3.3.1.3 |

| ID | WBS | Task | Duration | Start | Finish | Predecessors | Baseline start | Baseline finish | Baseline duration | Baseline 1 start | Baseline 1 finish | Total slack | Free slack | Constraint | Resources | Work | Cost | Baseline cost | EDT |
| --- | --- | --- | --- | --- | --- | --- | --- | --- | --- | --- | --- | --- | --- | --- | --- | --- | --- | --- | --- |
| 27 | 1.3.3.2 | **Administrador** | 1d | 2025-11-17 | 2025-11-17 |  |  |  |  | 2025-11-17 | 2025-11-17 | 15d | 3d |  |  | 6h | 186.36 |  | 3.3.2 |
| 28 | 1.3.3.2.1 | Listado de todos los pedidos | 1d | 2025-11-17 | 2025-11-17 |  |  |  |  | 2025-11-17 | 2025-11-17 | 15d |  |  | Desarrollador Full-Stack | 6h | 186.36 |  | 3.3.2.1 |
| 29 | 1.3.3.3 | Ejecutar pruebas 3 | 2d | 2025-11-21 | 2025-11-22 | 23, 27 |  |  |  | 2025-11-21 | 2025-11-22 | 12d |  |  | Tester de calidad | 12h | 285.24 |  | 3.3.3 |
| 30 | 1.4 | **Seguimiento y Control** | 5.5d | 2025-11-24 | 2025-11-28 | 7 | 2023-11-02 | 2025-01-30 | 434.67d | 2025-11-24 | 2025-11-28 |  |  | start no earlier than 2025-11-24 |  | 24h | 905.28 | 1,802.4 |  |
| 31 | 1.4.1 | Informes de seguimiento | 4d | 2025-11-24 | 2025-11-27 |  |  |  |  | 2025-11-24 | 2025-11-27 | 6.67d |  | start no earlier than 2025-11-24 | Gestor de documentación/Analista | 24h | 905.28 |  | 4.1 |
| 32 | 1.5 | **Cierre** | 4d | 2025-12-01 | 2025-12-04 | 30 | 2025-01-31 | 2025-02-14 | 14.67d | 2025-12-01 | 2025-12-04 |  |  |  |  | 24h | 905.28 | 4,904 |  |
| 33 | 1.5.1 | Informes y lecciones aprendidas | 4d | 2025-11-29 | 2025-12-03 |  | 2025-01-31 | 2025-02-10 | 9.33d | 2025-11-29 | 2025-12-03 | 1.67d |  | finish no earlier than 2025-12-03 | Gestor de documentación/Analista | 24h | 905.28 | 3,136 | 5.1 |
